# Agile Project Management

Schedule from MS Project, 2025-09-29 to 2025-11-21, costs in zł, A marks actual dates.
DT

## Calendars

- Standardowy: Mon-Fri 09:00-13:00, 14:00-18:00; Sat-Sun off.

## Resources

| Resource | Group | Rate |
| --- | --- | --- |
| Joe | Product Owner | 60 |
| Makise | Scrum Master | 45 |
| Amush | Developer Backend | 50 |
| Lucjusz | Developer Frontend | 50 |
| Okabe | Developer Tester | 40 |

## Schedule

| ID | WBS | Task | Type | Duration | Start | Finish | Complete | Actual start | Actual finish | Baseline start | Baseline finish | Baseline duration | Resources | Work | Actual work | Cost | Baseline cost | Actual cost |
| --- | --- | --- | --- | --- | --- | --- | --- | --- | --- | --- | --- | --- | --- | --- | --- | --- | --- | --- |
| 1 | 1 | **Sprint 1** |  | 2w | 2025-09-29 | 2025-10-10 A | 100% | 2025-09-30 |  | 2025-09-29 | 2025-10-10 | 2w |  | 29.4h | 29.4h | 1,448 | 1,448 | 1,448 |
| 2 | 1.1 | **Analiza wymagań i dokumentacja** |  | 10d | 2025-09-29 | 2025-10-10 | 100% | 2025-09-30 | 2025-10-01 | 2025-09-29 | 2025-10-10 | 10d |  | 4.4h | 4.4h | 198 | 198 | 198 |
| 3 | 1.1.1 | Analiza wymagań biznesowych | manual | 1.12d | 2025-09-30 A | 2025-10-01 A | 100% |  |  | 2025-09-29 | 2025-09-29 | 0.3d | Makise | 2.4h | 2.4h | 108 | 108 | 108 |
| 4 | 1.1.2 | Spisanie dokumentacji projektu | manual | 1d | 2025-10-01 A | 2025-10-01 A | 100% |  |  | 2025-09-29 | 2025-09-29 | 0.25d | Makise | 2h | 2h | 90 | 90 | 90 |
| 5 | 1.2 | **Projekt interfejsu (UI)** |  | 10d | 2025-09-29 | 2025-10-10 | 100% | 2025-09-30 | 2025-10-06 | 2025-09-29 | 2025-10-10 | 10d |  | 13h | 13h | 650 | 650 | 650 |
| 6 | 1.2.1 | Projekt makiety strony głównej | manual | 2.25d | 2025-09-30 A | 2025-10-02 A | 100% |  |  | 2025-09-29 | 2025-09-29 | 0.62d | Lucjusz | 5h | 5h | 250 | 250 | 250 |
| 7 | 1.2.2 | Projekt formularzy | manual | 3.12d | 2025-10-01 A | 2025-10-06 A | 100% |  |  | 2025-09-29 | 2025-09-29 | 0.5d | Lucjusz | 4h | 4h | 200 | 200 | 200 |
| 8 | 1.2.3 | Dobór stylów CSS i fontów | manual | 2.25d | 2025-10-02 A | 2025-10-06 A | 100% |  |  | 2025-09-29 | 2025-09-29 | 0.5d | Lucjusz | 4h | 4h | 200 | 200 | 200 |
| 9 | 1.3 | **Rejestracja i logowanie** |  | 10d | 2025-09-29 | 2025-10-10 A | 100% | 2025-10-01 |  | 2025-09-29 | 2025-10-10 | 10d |  | 12h | 12h | 600 | 600 | 600 |
| 10 | 1.3.1 | Utworzenie tabeli 'Users' w DB | manual | 2.12d | 2025-10-01 A | 2025-10-03 A | 100% |  |  | 2025-09-29 | 2025-09-29 | 0.38d | Amush | 3h | 3h | 150 | 150 | 150 |
| 11 | 1.3.2 | API Backend: Logowanie | manual | 2.12d | 2025-10-03 A | 2025-10-08 A | 100% |  |  | 2025-09-29 | 2025-09-29 | 0.5d | Amush | 4h | 4h | 200 | 200 | 200 |
| 12 | 1.3.3 | Frontend: Formularz HTML/JS | manual | 2.12d | 2025-10-06 A | 2025-10-10 A | 100% |  |  | 2025-09-29 | 2025-09-29 | 0.62d | Lucjusz | 5h | 5h | 250 | 250 | 250 |
| 13 | 2 | **Sprint 2** |  | 2w | 2025-10-13 | 2025-10-24 | 100% | 2025-10-14 | 2025-10-22 | 2025-10-13 | 2025-10-24 | 2w |  | 27.8h | 27.8h | 1,379 | 1,379 | 1,379 |
| 14 | 2.1 | **Katalog produktów (Backend + Lista)** |  | 10d | 2025-10-13 | 2025-10-24 | 100% | 2025-10-14 | 2025-10-17 | 2025-10-13 | 2025-10-24 | 10d |  | 9.6h | 9.6h | 480 | 480 | 480 |
| 15 | 2.1.1 | Backend: Endpoint GET /products | manual | 2.12d | 2025-10-14 A | 2025-10-16 A | 100% |  |  | 2025-10-13 | 2025-10-13 | 0.5d | Amush | 4h | 4h | 200 | 200 | 200 |
| 16 | 2.1.2 | Frontend: Widok listy (HTML/CSS) | manual | 2.12d | 2025-10-14 A | 2025-10-16 A | 100% |  |  | 2025-10-13 | 2025-10-13 | 0.45d | Lucjusz | 3.6h | 3.6h | 180 | 180 | 180 |
| 17 | 2.1.3 | Frontend: Pobieranie danych (JS) | manual | 1.12d | 2025-10-16 A | 2025-10-17 A | 100% |  |  | 2025-10-13 | 2025-10-13 | 0.25d | Lucjusz | 2h | 2h | 100 | 100 | 100 |
| 18 | 2.2 | **Filtrowanie produktów** |  | 10d | 2025-10-13 | 2025-10-24 | 100% | 2025-10-14 | 2025-10-15 | 2025-10-13 | 2025-10-24 | 10d |  | 5.2h | 5.2h | 249 | 249 | 249 |
| 19 | 2.2.1 | Backend: Zapytania SQL (WHERE) | manual | 1.12d | 2025-10-14 A | 2025-10-15 A | 100% |  |  | 2025-10-13 | 2025-10-13 | 0.28d | Makise | 2.2h | 2.2h | 99 | 99 | 99 |
| 20 | 2.2.2 | Frontend: Pasek boczny filtrów | manual | 1.25d | 2025-10-14 A | 2025-10-15 A | 100% |  |  | 2025-10-13 | 2025-10-13 | 0.38d | Lucjusz | 3h | 3h | 150 | 150 | 150 |
| 21 | 2.3 | **Koszyk zakupowy** |  | 10d | 2025-10-13 | 2025-10-24 | 100% | 2025-10-14 | 2025-10-22 | 2025-10-13 | 2025-10-24 | 10d |  | 13h | 13h | 650 | 650 | 650 |
| 22 | 2.3.1 | Backend: Sesja koszyka (Logic) | manual | 3.12d | 2025-10-14 A | 2025-10-17 A | 100% |  |  | 2025-10-13 | 2025-10-13 | 0.5d | Amush | 4h | 4h | 200 | 200 | 200 |
| 23 | 2.3.2 | Frontend: Przycisk Dodaj (JS) | manual | 2.12d | 2025-10-17 A | 2025-10-21 A | 100% |  |  | 2025-10-13 | 2025-10-13 | 0.5d | Lucjusz | 4h | 4h | 200 | 200 | 200 |
| 24 | 2.3.3 | Frontend: Widok koszyka (Table) | manual | 1.5d | 2025-10-21 A | 2025-10-22 A | 100% |  |  | 2025-10-13 | 2025-10-13 | 0.62d | Lucjusz | 5h | 5h | 250 | 250 | 250 |

| ID | WBS | Task | Type | Duration | Start | Finish | Complete | Actual start | Actual finish | Baseline start | Baseline finish | Baseline duration | Resources | Work | Actual work | Cost | Baseline cost | Actual cost |
| --- | --- | --- | --- | --- | --- | --- | --- | --- | --- | --- | --- | --- | --- | --- | --- | --- | --- | --- |
| 25 | 3 | **Sprint 3** |  | 10d | 2025-10-27 | 2025-11-07 | 100% | 2025-10-28 | 2025-11-04 | 2025-10-27 | 2025-11-07 | 10d |  | 37.2h | 37.2h | 1,849 | 1,849 | 1,849 |
| 26 | 3.1 | **Proces składania zamówienia** |  | 10d | 2025-10-27 | 2025-11-07 | 100% | 2025-10-28 | 2025-10-31 | 2025-10-27 | 2025-11-07 | 10d |  | 11.2h | 11.2h | 549 | 549 | 549 |
| 27 | 3.1.1 | Backend: API zapisu zamówienia | manual | 3.12d | 2025-10-28 A | 2025-10-31 A | 100% |  |  | 2025-10-27 | 2025-10-27 | 0.62d | Amush | 5h | 5h | 250 | 250 | 250 |
| 28 | 3.1.2 | Frontend: Formularz dostawy | manual | 2.12d | 2025-10-28 A | 2025-10-30 A | 100% |  |  | 2025-10-27 | 2025-10-27 | 0.5d | Lucjusz | 4h | 4h | 200 | 200 | 200 |
| 29 | 3.1.3 | DB: Tabela Orders i relacje | manual | 2.12d | 2025-10-28 A | 2025-10-30 A | 100% |  |  | 2025-10-27 | 2025-10-27 | 0.28d | Makise | 2.2h | 2.2h | 99 | 99 | 99 |
| 30 | 3.2 | **Bramka płatności (Integracja)** |  | 10d | 2025-10-27 | 2025-11-07 | 100% | 2025-10-28 | 2025-10-31 | 2025-10-27 | 2025-11-07 | 10d |  | 9h | 9h | 450 | 450 | 450 |
| 31 | 3.2.1 | Integracja API (klucze, connect) | manual | 3.12d | 2025-10-28 A | 2025-10-31 A | 100% |  |  | 2025-10-27 | 2025-10-27 | 0.62d | Amush | 5h | 5h | 250 | 250 | 250 |
| 32 | 3.2.2 | Obsługa statusów płatności (UI) | manual | 3.12d | 2025-10-28 A | 2025-10-31 A | 100% |  |  | 2025-10-27 | 2025-10-27 | 0.5d | Lucjusz | 4h | 4h | 200 | 200 | 200 |
| 33 | 3.3 | **Panel administracyjny** |  | 10d | 2025-10-27 | 2025-11-07 | 100% | 2025-10-28 | 2025-11-04 | 2025-10-27 | 2025-11-07 | 10d |  | 17h | 17h | 850 | 850 | 850 |
| 34 | 3.3.1 | Layout panelu i Dashboard | manual | 4.12d | 2025-10-28 A | 2025-11-04 A | 100% |  |  | 2025-10-27 | 2025-10-27 | 0.62d | Lucjusz | 5h | 5h | 250 | 250 | 250 |
| 35 | 3.3.2 | Backend: Edycja produktów | manual | 4.25d | 2025-10-28 A | 2025-11-04 A | 100% |  |  | 2025-10-27 | 2025-10-27 | 0.75d | Amush | 6h | 6h | 300 | 300 | 300 |
| 36 | 3.3.3 | Frontend: Lista zamówień (View) | manual | 3.12d | 2025-10-28 A | 2025-11-04 A | 100% |  |  | 2025-10-27 | 2025-10-27 | 0.75d | Lucjusz | 6h | 6h | 300 | 300 | 300 |
| 37 | 4 | **Sprint 4** |  | 10d | 2025-11-10 | 2025-11-21 | 100% | 2025-11-11 | 2025-11-13 | 2025-11-10 | 2025-11-21 | 10d |  | 25.4h | 25.4h | 1,123 | 1,090 | 1,123 |
| 38 | 4.1 | **Testy funkcjonalne i integracyjne** |  | 10d | 2025-11-10 | 2025-11-21 | 100% | 2025-11-11 | 2025-11-13 | 2025-11-10 | 2025-11-21 | 10d |  | 10.4h | 10.4h | 416 | 416 | 416 |
| 39 | 4.1.1 | Scenariusze testowe (Docs) | manual | 1d | 2025-11-11 A | 2025-11-11 A | 100% |  |  | 2025-11-10 | 2025-11-10 | 0.3d | Okabe | 2.4h | 2.4h | 96 | 96 | 96 |
| 40 | 4.1.2 | Testy manualne interfejsu (UI) | manual | 1.25d | 2025-11-11 A | 2025-11-12 A | 100% |  |  | 2025-11-10 | 2025-11-10 | 0.5d | Okabe | 4h | 4h | 160 | 160 | 160 |
| 41 | 4.1.3 | Testy integracyjne API (Auto) | manual | 1.25d | 2025-11-12 A | 2025-11-13 A | 100% |  |  | 2025-11-10 | 2025-11-10 | 0.5d | Okabe | 4h | 4h | 160 | 160 | 160 |
| 42 | 4.2 | **Optymalizacja wydajności** |  | 10d | 2025-11-10 | 2025-11-21 | 100% | 2025-11-11 | 2025-11-12 | 2025-11-10 | 2025-11-21 | 10d |  | 8.4h | 8.4h | 410 | 410 | 410 |
| 43 | 4.2.1 | Minifikacja kodu JS/CSS | manual | 1d | 2025-11-11 A | 2025-11-11 A | 100% |  |  | 2025-11-10 | 2025-11-10 | 0.3d | Lucjusz | 2.4h | 2.4h | 120 | 120 | 120 |
| 44 | 4.2.2 | Optymalizacja zapytań SQL | manual | 1d | 2025-11-11 A | 2025-11-11 A | 100% |  |  | 2025-11-10 | 2025-11-10 | 0.25d | Makise | 2h | 2h | 90 | 90 | 90 |
| 45 | 4.2.3 | Audyt wydajności (Lighthouse) | manual | 1d | 2025-11-12 A | 2025-11-12 A | 100% |  |  | 2025-11-10 | 2025-11-10 | 0.5d | Lucjusz | 4h | 4h | 200 | 200 | 200 |
| 46 | 4.3 | **Demo i dokumentacja końcowa** |  | 10d | 2025-11-10 | 2025-11-21 | 100% | 2025-11-11 | 2025-11-12 | 2025-11-10 | 2025-11-21 | 10d |  | 6.6h | 6.6h | 297 | 264 | 297 |
| 47 | 4.3.1 | Przygotowanie prezentacji Demo | manual | 1d | 2025-11-11 A | 2025-11-11 A | 100% |  |  | 2025-11-10 | 2025-11-10 | 0.33d | Makise | 2.6h | 2.6h | 117 | 104 | 117 |
| 48 | 4.3.2 | Kompletowanie dok. technicznej | manual | 1d | 2025-11-12 A | 2025-11-12 A | 100% |  |  | 2025-11-10 | 2025-11-10 | 0.5d | Makise | 4h | 4h | 180 | 160 | 180 |
